# ANARI CTS 1.0

Schedule from MS Project, 2022-09-12 to 2022-10-18.

## Calendars

- Standard: Mon-Fri 08:00-12:00, 13:00-17:00; Sat-Sun off.

## Resources

| Resource |
| --- |
| Management |
| Project Manager |
| Analyst |
| Developer |
| Testers |
| Trainers |
| Technical Communicators |
| Deployment Team |

## Schedule

| ID | WBS | Task | Duration | Start | Finish | Predecessors | Total slack | Free slack |
| --- | --- | --- | --- | --- | --- | --- | --- | --- |
| 1 | 1 | **Project Setup** | 10d? | 2022-09-12 | 2022-09-23 |  |  |  |
| 2 | 1.1 | **Setup architecture** | 2d? | 2022-09-12 | 2022-09-13 |  | 13d |  |
| 3 | 1.1.1 | Setup ANARI SDK | 1d? | 2022-09-12 | 2022-09-12 |  | 17d | 0d |
| 4 | 1.1.2 | Setup C++ Wrapper | 1d? | 2022-09-12 | 2022-09-12 |  | 17d | 0d |
| 5 | 1.1.3 | Setup Python | 1d? | 2022-09-12 | 2022-09-12 |  | 17d | 0d |
| 6 | 1.1.4 | Setup pybind11 | 1d? | 2022-09-13 | 2022-09-13 | 4, 5, 3 | 17d |  |
| 7 | 2 | **Implementation Phase** | 8d? | 2022-09-26 | 2022-10-05 | 1 | 5d | 0d |
| 8 | 2.1 | **Render a set of known test scenes** | 4d? | 2022-09-26 | 2022-09-29 |  | 5d | 0d |
| 9 | 2.1.1 | Define test scene format | 1d? | 2022-09-26 | 2022-09-26 |  | 5d | 0d |
| 10 | 2.1.2 | Generate with all (viable) permutations | 1d? | 2022-09-26 | 2022-09-26 |  | 5d | 0d |
| 11 | 2.1.3 | **Geometries generation** | 1d? | 2022-09-27 | 2022-09-27 | 10, 9 | 5d | 0d |
| 12 | 2.1.3.1 | **Triangle** | 1d? | 2022-09-27 | 2022-09-27 |  | 5d |  |
| 13 | 2.1.3.1.1 | Triangle | 1d? | 2022-09-27 | 2022-09-27 |  | 5d |  |
| 14 | 2.1.3.1.2 | Plane | 1d? | 2022-09-27 | 2022-09-27 |  | 5d |  |
| 15 | 2.1.3.1.3 | Cube | 1d? | 2022-09-27 | 2022-09-27 |  | 5d |  |
| 16 | 2.1.3.2 | **Quad** | 1d? | 2022-09-27 | 2022-09-27 |  | 5d |  |
| 17 | 2.1.3.2.1 | Plane | 1d? | 2022-09-27 | 2022-09-27 |  | 5d |  |
| 18 | 2.1.3.2.2 | Cube | 1d? | 2022-09-27 | 2022-09-27 |  | 5d |  |
| 19 | 2.1.3.3 | Sphere | 1d? | 2022-09-27 | 2022-09-27 |  | 5d |  |
| 20 | 2.1.3.4 | **Curve** | 1d? | 2022-09-27 | 2022-09-27 |  | 5d |  |
| 21 | 2.1.3.4.1 | Pipe | 1d? | 2022-09-27 | 2022-09-27 |  | 5d |  |
| 22 | 2.1.3.5 | Cone | 1d? | 2022-09-27 | 2022-09-27 |  | 5d |  |
| 23 | 2.1.3.6 | Cylinder | 1d? | 2022-09-27 | 2022-09-27 |  | 5d |  |
| 24 | 2.1.4 | **Render test scenes** | 2d? | 2022-09-28 | 2022-09-29 | 10, 11, 9 | 5d | 2d |
| 25 | 2.1.4.1 | Write Python API | 1d? | 2022-09-28 | 2022-09-28 |  | 5d | 0d |
| 26 | 2.1.4.2 | Write C++ backend | 1d? | 2022-09-28 | 2022-09-28 |  | 5d | 0d |
| 27 | 2.1.4.3 | Connect via pybind11 | 1d? | 2022-09-29 | 2022-09-29 | 25, 26 | 5d |  |

| ID | WBS | Task | Duration | Start | Finish | Predecessors | Total slack | Free slack |
| --- | --- | --- | --- | --- | --- | --- | --- | --- |
| 28 | 2.2 | **Image comparison “smoke tests”** | 2d? | 2022-09-30 | 2022-10-03 | 8 | 5d | 0d |
| 29 | 2.2.1 | Compare ground truth with test renderings | 1d? | 2022-09-30 | 2022-09-30 |  | 5d | 0d |
| 30 | 2.2.2 | Compile PDF report | 1d? | 2022-10-03 | 2022-10-03 | 29 | 5d |  |
| 31 | 2.3 | **Verification of object/parameter info metadata** | 2d? | 2022-09-26 | 2022-09-27 |  | 9d | 4d |
| 32 | 2.3.1 | Write Python API | 1d? | 2022-09-26 | 2022-09-26 |  | 9d | 0d |
| 33 | 2.3.2 | Write C++ backend | 1d? | 2022-09-26 | 2022-09-26 |  | 9d | 0d |
| 34 | 2.3.3 | Connect via pybind11 | 1d? | 2022-09-27 | 2022-09-27 | 32, 33 | 9d |  |
| 35 | 2.4 | **Verification of known object properties** | 2d? | 2022-09-30 | 2022-10-03 | 8 | 5d | 0d |
| 36 | 2.4.1 | Write Python API | 1d? | 2022-09-30 | 2022-09-30 |  | 5d | 0d |
| 37 | 2.4.2 | Write C++ backend | 1d? | 2022-09-30 | 2022-09-30 |  | 5d | 0d |
| 38 | 2.4.3 | Connect via pybind11 | 1d? | 2022-10-03 | 2022-10-03 | 36, 37 | 5d |  |
| 39 | 2.5 | **List core extensions implemented by a device** | 2d? | 2022-09-26 | 2022-09-27 |  | 9d | 4d |
| 40 | 2.5.1 | Write Python API | 1d? | 2022-09-26 | 2022-09-26 |  | 9d | 0d |
| 41 | 2.5.2 | Write C++ backend | 1d? | 2022-09-26 | 2022-09-26 |  | 9d | 0d |
| 42 | 2.5.3 | Connect via pybind11 | 1d? | 2022-09-27 | 2022-09-27 | 40, 41 | 9d |  |
| 43 | 2.6 | **Aggregate test results** | 2d? | 2022-10-04 | 2022-10-05 | 8, 24, 28, 31, 35, 39 | 5d |  |
| 44 | 2.6.1 | Call all Python API functions | 1d? | 2022-10-04 | 2022-10-04 |  | 5d | 0d |
| 45 | 2.6.2 | Compile PDF with all results | 1d? | 2022-10-05 | 2022-10-05 | 44 | 5d |  |
| 46 | 3 | **Beta** | 1d? | 2022-10-06 | 2022-10-06 | 7 | 5d | 0d |
| 47 | 3.1 | Bug fixing | 1d? | 2022-10-06 | 2022-10-06 |  | 5d |  |
| 48 | 3.2 | Write tests | 1d? | 2022-10-06 | 2022-10-06 |  | 5d |  |
| 49 | 3.3 | Fine tune features | 1d? | 2022-10-06 | 2022-10-06 |  | 5d |  |
| 50 | 4 | **Release Candidate** | 1d? | 2022-10-07 | 2022-10-07 | 46 | 5d | 0d |
| 51 | 4.1 | Bug fixing | 1d? | 2022-10-07 | 2022-10-07 |  | 5d |  |
| 52 | 4.2 | Write examples | 1d? | 2022-10-07 | 2022-10-07 |  | 5d |  |

| ID | WBS | Task | Type | Duration | Start | Finish | Predecessors | Total slack |
| --- | --- | --- | --- | --- | --- | --- | --- | --- |
| 53 | 5 | **Release** |  | 10d? | 2022-10-04 | 2022-10-17 | 50 |  |
| 54 | 5.1 | Documentation |  | 1d? | 2022-10-04 | 2022-10-04 |  | 9d |
| 55 | 5.2 | Demonstration |  | 1d? | 2022-10-04 | 2022-10-04 |  | 9d |
| 56 | 6 | ANARI CTS 1.0 complete | milestone | 0d | 2022-10-17 | 2022-10-17 | 53 | 1d |
| 57 | 7 | **Maintenance** |  | 1d? | 2022-10-18 | 2022-10-18 | 53 | 0d |
| 58 | 7.1 | Follow-up bugfixing |  | 1d? | 2022-10-18 | 2022-10-18 |  | 0d |
